# Progetto 2 PM

Schedule from MS Project, 2021-01-12 to 2021-08-23, costs in €.

## Calendars

- Standard: Mon-Fri 09:00-13:00, 14:00-18:00; Sat-Sun off.

## Resources

| Resource | Rate | Cost per use |
| --- | --- | --- |
| Gabriele De Bartolomeo | 25.13 |  |
| Cristian Colavito | 36.12 |  |
| Giorgio Levi | 34.37 |  |
| Carla Mora | 25.13 |  |
| Riccardo Melo | 22.07 |  |
| Fanny Velasco | 20 |  |
| Tiziano Seri | 20 |  |
| Mauro Neri | 20 |  |
| Franco Morbidoni | 18.22 |  |
| Ronald McDonovan | 15 |  |
| Franca Menta | 16.26 |  |
| Francesca Rocca | 17.11 |  |
| Giorgio Nelli | 17.11 |  |
| Budget corso anti social engineering |  |  |
| Budget Penetration testing |  |  |
| Wifi Access Points |  | 80 |
| Switches L2/L3 e Routers |  | 80 |
| Stampanti di rete |  | 1000 |
| Enterprise Switches (Accesso) |  | 600 |
| Enterprise Switches (Aggregazione) |  | 3000 |
| Enterprise Routers (Edge) |  | 6000 |
| Firewall |  | 10000 |
| Domain Servers |  | 1000 |
| Storage Area Network |  | 30000 |
| Roberto Nigro | 20 |  |
| spesa per wp immobile |  |  |
| Spese Generali per wp |  |  |

## Schedule

| ID | WBS | Task | Type | Duration | Start | Finish | Predecessors | Baseline start | Baseline finish | Baseline duration | Total slack | Constraint | Resources | Work | Cost | Baseline cost |
| --- | --- | --- | --- | --- | --- | --- | --- | --- | --- | --- | --- | --- | --- | --- | --- | --- |
| 1 | 1 | **Preso 3D** |  | 160d | 2021-01-12 | 2021-08-23 |  | 2021-01-12 | 2021-08-23 | 160d | 0d |  |  | 4147h | 179,663.69 | 179,663.73 |
| 2 | 1.1 | **OR1:GESTIONE E CONTROLLO** |  | 160d | 2021-01-12 | 2021-08-23 |  | 2021-01-12 | 2021-08-23 | 160d | 0d |  | spesa per wp immobile [0.1%]; Spese Generali per wp [0.1%] | 1000h | 40,245 | 40,245 |
| 3 | 1.1.1 | **Documenti di Project Management** |  | 157d | 2021-01-12 | 2021-08-18 |  | 2021-01-12 | 2021-08-18 | 157d | 0d |  |  | 976h | 35,253.12 | 35,253.12 |
| 4 | 1.1.1.1 | Business Case e Piano di Progetto |  | 3d | 2021-01-12 | 2021-01-14 |  | 2021-01-12 | 2021-01-14 | 3d | 0d |  | Cristian Colavito | 24h | 866.88 | 866.88 |
| 5 | 1.1.1.2 | Documento di Gestione dei Rischi |  | 2d | 2021-01-15 | 2021-01-18 | 4 | 2021-01-15 | 2021-01-18 | 2d | 0d |  | Cristian Colavito | 16h | 577.92 | 577.92 |
| 6 | 1.1.1.3 | Documento di Gestione della Qualità |  | 3d | 2021-01-19 | 2021-01-21 | 5 | 2021-01-19 | 2021-01-21 | 3d | 0d |  | Cristian Colavito | 24h | 866.88 | 866.88 |
| 7 | 1.1.1.4 | Documento di Gestione della Comunicazione |  | 5d | 2021-01-22 | 2021-01-28 | 6 | 2021-01-22 | 2021-01-28 | 5d | 0d |  | Cristian Colavito | 40h | 1,444.8 | 1,444.8 |
| 8 | 1.1.1.5 | Documento di Gestione del Timing, del Budget e delle Risorse |  | 2d | 2021-01-29 | 2021-02-01 | 7 | 2021-01-29 | 2021-02-01 | 2d | 0d |  | Cristian Colavito | 16h | 577.92 | 577.92 |
| 9 | 1.1.1.6 | Studio di mercato |  | 2d | 2021-02-02 | 2021-02-03 | 8 | 2021-02-02 | 2021-02-03 | 2d | 0d |  | Cristian Colavito | 16h | 577.92 | 577.92 |
| 10 | 1.1.1.7 | Documento di Controllo e Monitoraggio sugli Obiettivi del Progetto |  | 140d | 2021-02-04 | 2021-08-18 | 9 | 2021-02-04 | 2021-08-18 | 140d | 0d | finish no earlier than 2021-08-13 | Cristian Colavito | 840h | 30,340.8 | 30,340.8 |
| 11 | 1.1.2 | **Chiusura e lesson Learned** |  | 3d | 2021-08-19 | 2021-08-23 | 10, 100, 98 | 2021-08-19 | 2021-08-23 | 3d | 0d |  |  | 24h | 866.88 | 866.88 |
| 12 | 1.1.2.1 | Documento di Chiusura |  | 1d | 2021-08-19 | 2021-08-19 |  | 2021-08-19 | 2021-08-19 | 1d | 0d |  | Cristian Colavito | 8h | 288.96 | 288.96 |
| 13 | 1.1.2.2 | Lessons Learned |  | 2d | 2021-08-20 | 2021-08-23 | 12 | 2021-08-20 | 2021-08-23 | 2d | 0d |  | Cristian Colavito | 16h | 577.92 | 577.92 |
| 14 | 1.2 | **OR2 Realizzazione Back-end** |  | 52d | 2021-02-03 | 2021-04-16 |  | 2021-02-03 | 2021-04-16 | 52d | 0d |  |  | 1408h | 32,976.2 | 32,976.2 |
| 15 | 1.2.1 | Milestone 1: Documenti inizio progetto | milestone | 0d | 2021-02-03 | 2021-02-03 | 9 | 2021-02-03 | 2021-02-03 | 0d | 0d |  |  |  |  |  |
| 16 | 1.2.2 | **Configurazione Server** |  | 3d | 2021-02-04 | 2021-02-08 | 15 | 2021-02-04 | 2021-02-08 | 3d | 0d |  | spesa per wp immobile [0.1%]; Spese Generali per wp [0.1%] | 48h | 5,257.8 | 1,132.8 |
| 17 | 1.2.2.1 | Inizializzazione dominio web |  | 2d | 2021-02-04 | 2021-02-05 |  | 2021-02-04 | 2021-02-05 | 2d | 0d |  | Carla Mora; Riccardo Melo | 32h | 755.2 | 755.2 |
| 18 | 1.2.2.2 | Avvio server sul dominio |  | 1d | 2021-02-08 | 2021-02-08 | 17 | 2021-02-08 | 2021-02-08 | 1d | 0d |  | Carla Mora; Riccardo Melo | 16h | 377.6 | 377.6 |
| 19 | 1.2.3 | **Progettazione e realizzazione database** |  | 13d | 2021-02-09 | 2021-02-25 | 16 | 2021-02-09 | 2021-02-25 | 13d | 0d |  |  | 208h | 4,678.4 | 4,678.4 |
| 20 | 1.2.3.1 | Realizzazione diagramma E/R |  | 5d | 2021-02-09 | 2021-02-15 |  | 2021-02-09 | 2021-02-15 | 5d | 0d |  | Carla Mora; Riccardo Melo | 80h | 1,888 | 1,888 |
| 21 | 1.2.3.2 | Progettazione logica del database |  | 2d | 2021-02-16 | 2021-02-17 | 20 | 2021-02-16 | 2021-02-17 | 2d | 0d |  | Carla Mora; Riccardo Melo | 32h | 755.2 | 755.2 |
| 22 | 1.2.3.3 | Progettazione fisica del database |  | 2d | 2021-02-18 | 2021-02-19 | 21 | 2021-02-18 | 2021-02-19 | 2d | 0d |  | Carla Mora; Riccardo Melo | 32h | 755.2 | 755.2 |
| 23 | 1.2.3.4 | Implementazione del database |  | 4d | 2021-02-22 | 2021-02-25 | 22 | 2021-02-22 | 2021-02-25 | 4d | 0d |  | Tiziano Seri; Mauro Neri | 64h | 1,280 | 1,280 |
| 24 | 1.2.4 | Milestone 2: Database | milestone | 0d | 2021-02-25 | 2021-02-25 | 19 | 2021-02-25 | 2021-02-25 | 0d | 0d |  |  |  |  |  |

| ID | WBS | Task | Type | Duration | Start | Finish | Predecessors | Baseline start | Baseline finish | Baseline duration | Total slack | Constraint | Resources | Work | Cost | Baseline cost |
| --- | --- | --- | --- | --- | --- | --- | --- | --- | --- | --- | --- | --- | --- | --- | --- | --- |
| 25 | 1.2.5 | **Realizzazione Service** |  | 20d | 2021-02-26 | 2021-03-25 | 24 | 2021-02-26 | 2021-03-25 | 20d | 0d |  |  | 640h | 12,800 | 12,800 |
| 26 | 1.2.5.1 | Servizi del User |  | 10d | 2021-02-26 | 2021-03-11 |  | 2021-02-26 | 2021-03-11 | 10d | 0d |  | Fanny Velasco; Mauro Neri | 160h | 3,200 | 3,200 |
| 27 | 1.2.5.2 | Servizi dell Azienda |  | 10d | 2021-02-26 | 2021-03-11 |  | 2021-02-26 | 2021-03-11 | 10d | 0d |  | Roberto Nigro; Tiziano Seri | 160h | 3,200 | 3,200 |
| 28 | 1.2.5.3 | Servizi del designer |  | 10d | 2021-03-12 | 2021-03-25 | 26 | 2021-03-12 | 2021-03-25 | 10d | 0d |  | Fanny Velasco; Mauro Neri | 160h | 3,200 | 3,200 |
| 29 | 1.2.5.4 | Servizi del Moderator |  | 10d | 2021-03-12 | 2021-03-25 | 27 | 2021-03-12 | 2021-03-25 | 10d | 0d |  | Roberto Nigro; Tiziano Seri | 160h | 3,200 | 3,200 |
| 30 | 1.2.6 | **Realizzazione Controller** |  | 16d | 2021-03-26 | 2021-04-16 | 25 | 2021-03-26 | 2021-04-16 | 16d | 0d |  |  | 512h | 10,240 | 10,240 |
| 31 | 1.2.6.1 | Realizzazione Controller Public |  | 6d | 2021-03-26 | 2021-04-02 |  | 2021-03-26 | 2021-04-02 | 6d | 0d |  | Roberto Nigro; Tiziano Seri | 96h | 1,920 | 1,920 |
| 32 | 1.2.6.2 | Realizzazione Controller InternoAzienda |  | 6d | 2021-03-26 | 2021-04-02 |  | 2021-03-26 | 2021-04-02 | 6d | 0d |  | Fanny Velasco; Mauro Neri | 96h | 1,920 | 1,920 |
| 33 | 1.2.6.3 | Realizzazione Controller User |  | 7d | 2021-04-05 | 2021-04-13 | 31 | 2021-04-05 | 2021-04-13 | 7d | 3d |  | Roberto Nigro; Tiziano Seri | 56h | 1,120 | 1,120 |
| 34 | 1.2.6.4 | Realizzazione Controller Designer |  | 10d | 2021-04-05 | 2021-04-16 | 32 | 2021-04-05 | 2021-04-16 | 10d | 0d |  | Fanny Velasco; Mauro Neri | 160h | 3,200 | 3,200 |
| 35 | 1.2.6.5 | Realizzazione Controller Moderator |  | 10d | 2021-04-05 | 2021-04-16 | 31 | 2021-04-05 | 2021-04-16 | 10d | 0d |  | Tiziano Seri; Roberto Nigro | 104h | 2,080 | 2,080 |
| 36 | 1.2.7 | SAL: Fine Back-end | milestone | 0d | 2021-04-16 | 2021-04-16 | 30 | 2021-04-16 | 2021-04-16 | 0d | 0d |  |  |  |  |  |
| 37 | 1.3 | **OR3: Realizzazione Front-end** |  | 39d | 2021-04-19 | 2021-06-10 | 14 | 2021-04-19 | 2021-06-10 | 39d | 0d |  |  | 874h | 20,724.8 | 20,724.8 |
| 38 | 1.3.1 | **Mappa di navigazione del sito e design del sito** |  | 20d | 2021-04-19 | 2021-05-14 | 36 | 2021-04-19 | 2021-05-14 | 20d | 0d |  | spesa per wp immobile [0.1%]; Spese Generali per wp [0.1%] | 294h | 9,124.8 | 4,999.8 |
| 39 | 1.3.1.1 | Realizzazione mappa di navigazione del sito |  | 1d | 2021-04-19 | 2021-04-19 |  | 2021-04-19 | 2021-04-19 | 1d | 19d |  | Carla Mora; Ronald McDonovan | 12h | 261.04 | 261.04 |
| 40 | 1.3.1.2 | Scelta colori e font del sito |  | 2d | 2021-04-19 | 2021-04-20 |  | 2021-04-19 | 2021-04-20 | 2d | 0d |  | Franco Morbidoni; Ronald McDonovan | 24h | 411.52 | 411.52 |
| 41 | 1.3.1.3 | Progettazione Header |  | 2d | 2021-04-21 | 2021-04-22 | 40 | 2021-04-21 | 2021-04-22 | 2d | 16d |  | Franco Morbidoni; Ronald McDonovan | 16h | 265.76 | 265.76 |
| 42 | 1.3.1.4 | Progettazione Footer |  | 2d | 2021-04-21 | 2021-04-22 | 40 | 2021-04-21 | 2021-04-22 | 2d | 0d |  | Franco Morbidoni; Ronald McDonovan | 16h | 265.76 | 265.76 |
| 43 | 1.3.1.5 | Progettazione Pagina Profilo |  | 2d | 2021-04-23 | 2021-04-26 | 42 | 2021-04-23 | 2021-04-26 | 2d | 14d |  | Franco Morbidoni; Ronald McDonovan | 16h | 265.76 | 265.76 |
| 44 | 1.3.1.6 | Progettazione Pagina Login |  | 2d | 2021-04-23 | 2021-04-26 | 42 | 2021-04-23 | 2021-04-26 | 2d | 0d |  | Franco Morbidoni; Ronald McDonovan | 16h | 265.76 | 265.76 |
| 45 | 1.3.1.7 | Progettazione Registrazione |  | 2d | 2021-04-27 | 2021-04-28 | 44 | 2021-04-27 | 2021-04-28 | 2d | 12d |  | Franco Morbidoni; Ronald McDonovan | 16h | 265.76 | 265.76 |
| 46 | 1.3.1.8 | Progettazione area recensioni |  | 3d | 2021-04-27 | 2021-04-29 | 44 | 2021-04-27 | 2021-04-29 | 3d | 0d |  | Franco Morbidoni; Ronald McDonovan | 28h | 471.52 | 471.52 |
| 47 | 1.3.1.9 | Progettazione Carrello |  | 2d | 2021-04-30 | 2021-05-03 | 46 | 2021-04-30 | 2021-05-03 | 2d | 9d |  | Franco Morbidoni | 8h | 145.76 | 145.76 |
| 48 | 1.3.1.10 | Progettazione area acquisti |  | 3d | 2021-04-30 | 2021-05-04 | 46 | 2021-04-30 | 2021-05-04 | 3d | 0d |  | Franco Morbidoni; Ronald McDonovan | 28h | 471.52 | 471.52 |
| 49 | 1.3.1.11 | Progettazione pagina prodotto |  | 2d | 2021-05-05 | 2021-05-06 | 48 | 2021-05-05 | 2021-05-06 | 2d | 6d |  | Franco Morbidoni; Ronald McDonovan | 14h | 229.32 | 229.32 |
| 50 | 1.3.1.12 | Progettazione Modifica Prodotto |  | 1d | 2021-05-05 | 2021-05-05 | 48 | 2021-05-05 | 2021-05-05 | 1d | 0d |  | Franco Morbidoni; Ronald McDonovan | 8h | 132.88 | 132.88 |
| 51 | 1.3.1.13 | Progettazione Visualizza profilo utente e designer |  | 2d | 2021-05-06 | 2021-05-07 | 50 | 2021-05-06 | 2021-05-07 | 2d | 0d |  | Franco Morbidoni; Ronald McDonovan | 18h | 302.2 | 302.2 |
| 52 | 1.3.1.14 | Progettazione Area Lavora con noi |  | 1d | 2021-05-06 | 2021-05-06 | 50 | 2021-05-06 | 2021-05-06 | 1d | 0d | finish no later than 2021-05-06 | Franco Morbidoni | 2h | 36.44 | 36.44 |
| 53 | 1.3.1.15 | Progettazione Chat |  | 2d | 2021-05-10 | 2021-05-11 | 52, 51 | 2021-05-10 | 2021-05-11 | 2d | 0d |  | Franco Morbidoni; Ronald McDonovan | 24h | 385.76 | 385.76 |
| 54 | 1.3.1.16 | Progettazione Area Candidati Designer |  | 2d | 2021-05-10 | 2021-05-11 | 51, 52 | 2021-05-10 | 2021-05-11 | 2d | 0d |  | Franco Morbidoni | 8h | 145.76 | 145.76 |
| 55 | 1.3.1.17 | Progettazione Area Ordini |  | 2d | 2021-05-12 | 2021-05-13 | 54, 53 | 2021-05-12 | 2021-05-13 | 2d | 1d |  | Franco Morbidoni; Ronald McDonovan | 16h | 265.76 | 265.76 |
| 56 | 1.3.1.18 | Progettazione Area Gestione Produzione |  | 2d | 2021-05-12 | 2021-05-13 | 53, 54 | 2021-05-12 | 2021-05-13 | 2d | 0d |  | Franco Morbidoni; Ronald McDonovan | 16h | 265.76 | 265.76 |
| 57 | 1.3.1.19 | Progettazione Area Classifica |  | 1d | 2021-05-14 | 2021-05-14 | 56 | 2021-05-14 | 2021-05-14 | 1d | 0d |  | Franco Morbidoni | 4h | 72.88 | 72.88 |
| 58 | 1.3.1.20 | Progettazione Area Ricerca Prodotto |  | 1d | 2021-05-14 | 2021-05-14 | 56 | 2021-05-14 | 2021-05-14 | 1d | 0d |  | Franco Morbidoni | 4h | 72.88 | 72.88 |
| 59 | 1.3.2 | Milestone 3: Mockup del sito | milestone | 0d | 2021-05-14 | 2021-05-14 | 38 | 2021-05-14 | 2021-05-14 | 0d | 0d |  |  |  |  |  |

| ID | WBS | Task | Type | Duration | Start | Finish | Predecessors | Baseline start | Baseline finish | Baseline duration | Total slack | Free slack | Resources | Work | Cost | Baseline cost |
| --- | --- | --- | --- | --- | --- | --- | --- | --- | --- | --- | --- | --- | --- | --- | --- | --- |
| 60 | 1.3.3 | **Realizzazione Viste** |  | 19d | 2021-05-17 | 2021-06-10 | 59 | 2021-05-17 | 2021-06-10 | 19d | 0d |  |  | 580h | 11,600 | 11,600 |
| 61 | 1.3.3.3 | Realizzazione Header |  | 1d | 2021-05-17 | 2021-05-17 |  | 2021-05-17 | 2021-05-17 | 1d | 1d | 0d | Fanny Velasco; Mauro Neri | 16h | 320 | 320 |
| 62 | 1.3.3.4 | Realizzazione Footer |  | 1d | 2021-05-17 | 2021-05-17 |  | 2021-05-17 | 2021-05-17 | 1d | 0d |  | Tiziano Seri; Roberto Nigro | 16h | 320 | 320 |
| 63 | 1.3.3.5 | Realizzazione Pagina Profilo |  | 1d | 2021-05-18 | 2021-05-18 | 61 | 2021-05-18 | 2021-05-18 | 1d | 1d | 0d | Fanny Velasco; Mauro Neri | 16h | 320 | 320 |
| 64 | 1.3.3.6 | Realizzazione Pagina Login |  | 1d | 2021-05-18 | 2021-05-18 | 62 | 2021-05-18 | 2021-05-18 | 1d | 0d |  | Tiziano Seri; Roberto Nigro | 16h | 320 | 320 |
| 65 | 1.3.3.7 | Realizzazione Registrazione |  | 1d | 2021-05-19 | 2021-05-19 | 63 | 2021-05-19 | 2021-05-19 | 1d | 1d | 0d | Fanny Velasco; Mauro Neri | 16h | 320 | 320 |
| 66 | 1.3.3.8 | Realizzazione area recensioni |  | 2d | 2021-05-19 | 2021-05-20 | 64 | 2021-05-19 | 2021-05-20 | 2d | 0d |  | Tiziano Seri; Roberto Nigro | 32h | 640 | 640 |
| 67 | 1.3.3.9 | Realizzazione Carrello |  | 2d | 2021-05-20 | 2021-05-21 | 65 | 2021-05-20 | 2021-05-21 | 2d | 1d | 0d | Fanny Velasco; Mauro Neri | 20h | 400 | 400 |
| 68 | 1.3.3.10 | Realizzazione area acquisti |  | 2d | 2021-05-21 | 2021-05-24 | 66 | 2021-05-21 | 2021-05-24 | 2d | 0d |  | Tiziano Seri; Roberto Nigro | 32h | 640 | 640 |
| 69 | 1.3.3.11 | Realizzazione pagina prodotto |  | 3d | 2021-05-24 | 2021-05-26 | 67 | 2021-05-24 | 2021-05-26 | 3d | 1d | 0d | Fanny Velasco; Mauro Neri | 48h | 960 | 960 |
| 70 | 1.3.3.12 | Realizzazione Modifica Prodotto |  | 3d | 2021-05-25 | 2021-05-27 | 68 | 2021-05-25 | 2021-05-27 | 3d | 0d |  | Tiziano Seri; Roberto Nigro | 48h | 960 | 960 |
| 71 | 1.3.3.13 | Realizzazione Visualizza profilo utente e designer |  | 2d | 2021-05-27 | 2021-05-28 | 69 | 2021-05-27 | 2021-05-28 | 2d | 1d | 0d | Fanny Velasco; Mauro Neri | 32h | 640 | 640 |
| 72 | 1.3.3.14 | Realizzazione Area Lavora con noi |  | 2d | 2021-05-28 | 2021-05-31 | 70 | 2021-05-28 | 2021-05-31 | 2d | 0d |  | Tiziano Seri; Roberto Nigro | 32h | 640 | 640 |
| 73 | 1.3.3.15 | Realizzazione Chat |  | 2d | 2021-05-31 | 2021-06-01 | 71 | 2021-05-31 | 2021-06-01 | 2d | 1d | 0d | Mauro Neri; Fanny Velasco | 32h | 640 | 640 |
| 74 | 1.3.3.16 | Realizzazione Area Candidati Designer |  | 2d | 2021-06-01 | 2021-06-02 | 72 | 2021-06-01 | 2021-06-02 | 2d | 0d |  | Tiziano Seri; Roberto Nigro | 32h | 640 | 640 |
| 75 | 1.3.3.17 | Realizzazione Area Ordini |  | 2d | 2021-06-02 | 2021-06-03 | 73 | 2021-06-02 | 2021-06-03 | 2d | 1d | 0d | Mauro Neri; Fanny Velasco | 32h | 640 | 640 |
| 76 | 1.3.3.18 | Realizzazione Area Gestione Produzione |  | 2d | 2021-06-03 | 2021-06-04 | 74 | 2021-06-03 | 2021-06-04 | 2d | 0d |  | Tiziano Seri; Roberto Nigro | 32h | 640 | 640 |
| 77 | 1.3.3.19 | Realizzazione Area Classifica |  | 4d | 2021-06-04 | 2021-06-09 | 75 | 2021-06-04 | 2021-06-09 | 4d | 1d |  | Mauro Neri; Fanny Velasco | 64h | 1,280 | 1,280 |
| 78 | 1.3.3.20 | Realizzazione Area Ricerca Prodotto |  | 4d | 2021-06-07 | 2021-06-10 | 76 | 2021-06-07 | 2021-06-10 | 4d | 0d |  | Tiziano Seri; Roberto Nigro | 64h | 1,280 | 1,280 |
| 79 | 1.3.4 | SAL: Fine Front-end | milestone | 0d | 2021-06-10 | 2021-06-10 | 60 | 2021-06-10 | 2021-06-10 | 0d | 0d |  |  |  |  |  |
| 80 | 1.4 | **OR4: Organizzazione della rete locale e testing** |  | 52d | 2021-06-11 | 2021-08-23 | 37 | 2021-06-11 | 2021-08-23 | 52d | 0d |  |  | 865h | 85,717.69 | 85,717.73 |
| 81 | 1.4.1 | **Report pianificazione dell’infrastruttura di rete** |  | 19d | 2021-06-11 | 2021-07-07 | 79 | 2021-06-11 | 2021-07-07 | 19d | 0d |  | spesa per wp immobile [0.1%]; Spese Generali per wp [0.1%] | 276h | 12,465.36 | 8,340.36 |
| 82 | 1.4.1.1 | Analisi di mercato sulle soluzioni topologiche moderne |  | 2d | 2021-06-11 | 2021-06-14 |  | 2021-06-11 | 2021-06-14 | 2d | 0d |  | Gabriele De Bartolomeo; Giorgio Levi | 32h | 952 | 952 |
| 83 | 1.4.1.2 | Individuazione asset informatici e rischi correlati |  | 6d | 2021-06-15 | 2021-06-22 | 82 | 2021-06-15 | 2021-06-22 | 6d | 0d |  | Gabriele De Bartolomeo; Giorgio Levi | 96h | 2,856 | 2,856 |
| 84 | 1.4.1.3 | Pianificazione su software di simulazione di topologie di rete |  | 7d | 2021-06-23 | 2021-07-01 | 83 | 2021-06-23 | 2021-07-01 | 7d | 0d |  | Gabriele De Bartolomeo; Giorgio Levi | 84h | 2,628.36 | 2,628.36 |
| 85 | 1.4.1.4 | Stesura di report finale sulla pianificazione della rete |  | 4d | 2021-07-02 | 2021-07-07 | 84 | 2021-07-02 | 2021-07-07 | 4d | 0d |  | Gabriele De Bartolomeo; Giorgio Levi | 64h | 1,904 | 1,904 |
| 86 | 1.4.2 | Milestone 4: Progettazione Infrastruttura | milestone | 0d | 2021-07-07 | 2021-07-07 | 81 | 2021-07-07 | 2021-07-07 | 0d | 0d |  |  |  |  |  |

| ID | WBS | Task | Type | Duration | Start | Finish | Predecessors | Baseline start | Baseline finish | Baseline duration | Total slack | Free slack | Constraint | Resources | Work | Cost | Baseline cost |
| --- | --- | --- | --- | --- | --- | --- | --- | --- | --- | --- | --- | --- | --- | --- | --- | --- | --- |
| 87 | 1.4.3 | **Realizzazione dell’infrastruttura di rete** |  | 15d | 2021-07-08 | 2021-07-28 | 86 | 2021-07-08 | 2021-08-09 | 23d | 18d |  |  |  | 70h | 53,134.1 | 53,134.14 |
| 88 | 1.4.3.1 | Acquisto degli apparati necessari e realizzazione della rete |  | 12d | 2021-07-08 | 2021-07-23 |  | 2021-07-08 | 2021-08-04 | 20d | 18d | 0d |  | Gabriele De Bartolomeo [39.3%]; Wifi Access Points [2000%]; Switches L2/L3 e Routers [1500%]; Stampanti di rete [200%]; Enterprise Switches (Accesso) [200%]; Enterprise Switches (Aggregazione) [400%]; Enterprise Routers (Edge) [200%]; Firewall [200%]; Domain Servers [200%]; Storage Area Network | 22h | 52,312.82 | 52,312.86 |
| 89 | 1.4.3.2 | Messa in opera dell’infrastruttura di rete |  | 3d | 2021-07-26 | 2021-07-28 | 88 | 2021-08-05 | 2021-08-09 | 3d | 18d |  |  | Giorgio Nelli; Francesca Rocca | 48h | 821.28 | 821.28 |
| 90 | 1.4.4 | **Rafforzamento della sicurezza informatica** |  | 16d | 2021-07-08 | 2021-07-29 | 86 | 2021-07-08 | 2021-07-29 | 16d | 0d |  |  |  | 167h | 12,914.07 | 12,914.07 |
| 91 | 1.4.4.1 | Valutazione preventivi con aziende specializzate in penetration testing |  | 10d | 2021-07-08 | 2021-07-21 |  | 2021-07-08 | 2021-07-21 | 10d | 0d |  | start no earlier than 2021-01-13 | Gabriele De Bartolomeo; Giorgio Levi | 28h | 851.48 | 851.48 |
| 92 | 1.4.4.2 | Svolgimento penetration testing da parte di due aziende scelte |  | 2d | 2021-07-22 | 2021-07-23 | 91 | 2021-07-22 | 2021-07-23 | 2d | 0d |  |  | Giorgio Nelli; Francesca Rocca; Giorgio Levi; Budget Penetration testing [0.1%] | 48h | 6,097.44 | 6,097.44 |
| 93 | 1.4.4.3 | Simulazione Disaster Recovery |  | 2d | 2021-07-26 | 2021-07-27 | 92 | 2021-07-26 | 2021-07-27 | 2d | 0d |  |  | Giorgio Nelli; Francesca Rocca; Giorgio Levi | 48h | 1,097.44 | 1,097.44 |
| 94 | 1.4.4.4 | Stesura delle linee guida per un piano di Disaster Recovery |  | 2d | 2021-07-28 | 2021-07-29 | 93 | 2021-07-28 | 2021-07-29 | 2d | 0d |  |  | Gabriele De Bartolomeo | 14h | 351.82 | 351.82 |
| 95 | 1.4.4.5 | Valutazione preventivi con aziende specializzate nell’attività di training per il contrasto al social engineering |  | 3d | 2021-07-08 | 2021-07-12 |  | 2021-07-08 | 2021-07-12 | 3d | 10d | 0d |  | Gabriele De Bartolomeo | 5h | 125.65 | 125.65 |
| 96 | 1.4.4.6 | Contrattazione ed erogazione del corso anti social-engineering da parte dell'azienda scelta |  | 3d | 2021-07-13 | 2021-07-15 | 95 | 2021-07-13 | 2021-07-15 | 3d | 10d |  |  | Franca Menta; Budget corso anti social engineering [0.1%] | 24h | 4,390.24 | 4,390.24 |
| 97 | 1.4.5 | Milestone 5: Realizzazione Infrastruttura | milestone | 0d | 2021-07-29 | 2021-07-29 | 90 | 2021-07-29 | 2021-07-29 | 0d | 0d |  |  |  |  |  |  |
| 98 | 1.4.6 | **Deploy della Piattaforma e testing** |  | 14d | 2021-07-30 | 2021-08-18 | 97 | 2021-07-30 | 2021-08-18 | 14d | 0d |  |  |  | 352h | 7,204.16 | 7,204.16 |
| 99 | 1.4.6.1 | Deploy della piattaforma |  | 4d | 2021-07-30 | 2021-08-04 |  | 2021-07-30 | 2021-08-04 | 4d | 0d |  |  | Carla Mora | 32h | 804.16 | 804.16 |
| 100 | 1.4.6.2 | Testing della piattaforma |  | 10d | 2021-08-05 | 2021-08-18 | 99 | 2021-08-05 | 2021-08-18 | 10d | 0d |  |  | Fanny Velasco; Mauro Neri; Roberto Nigro; Tiziano Seri | 320h | 6,400 | 6,400 |
| 101 | 1.4.7 | SAL: Testing e Chiusura Progetto | milestone | 0d | 2021-08-23 | 2021-08-23 | 11 | 2021-08-23 | 2021-08-23 | 0d | 0d |  |  |  |  |  |  |
